# EDT-SIGFoner

Schedule from MS Project, 2010-05-08 to 2010-08-05.

## Calendars

- Estándar: Mon-Fri 09:00-13:00, 15:00-19:00; Sat-Sun off. Exceptions (off unless hours are given): 2010-05-08 09:00-13:00, 15:00-19:00, 2010-05-15 to 2010-05-16 09:00-13:00, 15:00-19:00, 2010-05-22 to 2010-05-23 09:00-13:00, 15:00-19:00, 2010-05-30 09:00-13:00, 15:00-19:00, 2010-06-06 09:00-13:00, 15:00-19:00, 2010-06-13 09:00-13:00, 15:00-19:00, 2010-06-19 09:00-13:00, 15:00-19:00, 2010-06-27 09:00-13:00, 15:00-19:00, 2010-07-04 09:00-13:00, 15:00-19:00, 2010-07-11 09:00-13:00, 15:00-19:00, 2010-07-18 09:00-13:00, 15:00-19:00, 2010-07-25 09:00-13:00, 15:00-19:00, 2010-08-01 09:00-13:00, 15:00-19:00.

## Resources

| Resource | Rate |
| --- | --- |
| Gerente de Proyecto | 72.73 |
| Analista de Sistemas | 45.45 |
| Analista Funcional | 40.91 |
| Arquitecto | 40.91 |
| Analista Programador | 36.36 |
| Integrador de Sistemas | 36.36 |
| Diseñador BD Espacial | 36.36 |
| Documentador | 27.27 |
| Programador Jr | 27.27 |
| Asegurador de Calidad | 45.45 |
| Gerente General de Empresa |  |
| Jefe de Proyecto |  |
| Franco Castro |  |
| Erika Rojas |  |
| Gonzalo Azabache |  |
| Edmundo Esteban |  |
| Hebert Borjas |  |

## Schedule

| ID | WBS | Task | Duration | Start | Finish | Predecessors | Total slack | Free slack | Constraint | Resources | Work |
| --- | --- | --- | --- | --- | --- | --- | --- | --- | --- | --- | --- |
| 1 | 1 | **Sistema de Fidelización** | 79d? | 2010-05-08 | 2010-08-05 |  | 0d |  |  |  | 1096h |
| 2 | 1.1 | **Requerimientos** | 11d? | 2010-05-10 | 2010-05-20 |  | 67d |  |  |  | 328h |
| 3 | 1.1.1 | **Caso de Uso: Mantener Cliente** | 4d? | 2010-05-10 | 2010-05-13 |  | 74d |  |  |  | 32h |
| 4 | 1.1.1.1 | Agregar Reglas del Negocio | 3d | 2010-05-10 | 2010-05-12 |  | 74d | 0d | start no earlier than 2010-05-10 | Hebert Borjas | 24h |
| 5 | 1.1.1.2 | Aprobar especificación | 1d? | 2010-05-13 | 2010-05-13 | 4 | 74d |  | start no earlier than 2010-05-13 | Erika Rojas | 8h |
| 6 | 1.1.2 | **Caso de Uso: Asignar tarjeta** | 4d? | 2010-05-17 | 2010-05-20 |  | 67d |  |  |  | 32h |
| 7 | 1.1.2.1 | Agregar Reglas del Negocio | 3d | 2010-05-17 | 2010-05-19 |  | 67d | 0d | start no earlier than 2010-05-17 | Hebert Borjas | 24h |
| 8 | 1.1.2.2 | Aprobar especificación | 1d? | 2010-05-20 | 2010-05-20 | 7 | 67d |  | start no earlier than 2010-05-13 | Erika Rojas | 8h |
| 9 | 1.1.3 | **Caso de Uso: Mantener Producto** | 4d? | 2010-05-17 | 2010-05-20 |  | 67d |  |  |  | 32h |
| 10 | 1.1.3.1 | Agregar Reglas del Negocio | 3d | 2010-05-17 | 2010-05-19 |  | 67d | 0d | start no earlier than 2010-05-17 | Erika Rojas | 24h |
| 11 | 1.1.3.2 | Aprobar especificación | 1d? | 2010-05-20 | 2010-05-20 | 10 | 67d |  | start no earlier than 2010-05-13 | Erika Rojas | 8h |
| 12 | 1.1.4 | **Caso de Uso: Registrar Canje** | 5d? | 2010-05-10 | 2010-05-14 |  | 73d |  |  |  | 40h |
| 13 | 1.1.4.1 | Agregar Reglas del Negocio | 3d | 2010-05-10 | 2010-05-12 |  | 73d | 0d | start no earlier than 2010-05-10 | Erika Rojas | 24h |
| 14 | 1.1.4.2 | Aprobar especificación | 2d? | 2010-05-13 | 2010-05-14 | 13 | 73d |  | start no earlier than 2010-05-13 | Gonzalo Azabache | 16h |
| 15 | 1.1.5 | **Caso de Uso: Asignar Puntos x Producto** | 4d? | 2010-05-17 | 2010-05-20 |  | 67d |  |  |  | 32h |
| 16 | 1.1.5.1 | Agregar Reglas del Negocio | 3d | 2010-05-17 | 2010-05-19 |  | 67d | 0d | start no earlier than 2010-05-17 | Franco Castro | 24h |
| 17 | 1.1.5.2 | Aprobar especificación | 1d? | 2010-05-20 | 2010-05-20 | 16 | 67d |  | start no earlier than 2010-05-13 | Erika Rojas | 8h |
| 18 | 1.1.6 | **Caso de Uso: Consultar Puntos x Producto** | 4d? | 2010-05-10 | 2010-05-13 |  | 74d |  |  |  | 32h |
| 19 | 1.1.6.1 | Agregar Reglas del Negocio | 3d | 2010-05-10 | 2010-05-12 |  | 74d | 0d | start no earlier than 2010-05-10 | Franco Castro | 24h |
| 20 | 1.1.6.2 | Aprobar especificación | 1d? | 2010-05-13 | 2010-05-13 | 19 | 74d |  | start no earlier than 2010-05-13 | Erika Rojas | 8h |
| 21 | 1.1.7 | **Caso de Uso: Generar Orden de Pedido** | 4d? | 2010-05-10 | 2010-05-13 |  | 74d |  |  |  | 32h |
| 22 | 1.1.7.1 | Agregar Reglas del Negocio | 3d | 2010-05-10 | 2010-05-12 |  | 74d | 0d | start no earlier than 2010-05-10 | Gonzalo Azabache | 24h |
| 23 | 1.1.7.2 | Aprobar especificación | 1d? | 2010-05-13 | 2010-05-13 | 22 | 74d |  | start no earlier than 2010-05-13 | Hebert Borjas | 8h |
| 24 | 1.1.8 | **Caso de Uso: Actualizar Stock de Productos** | 4d? | 2010-05-17 | 2010-05-20 |  | 67d |  |  |  | 32h |
| 25 | 1.1.8.1 | Agregar Reglas del Negocio | 3d | 2010-05-17 | 2010-05-19 |  | 67d | 0d | start no earlier than 2010-05-17 | Gonzalo Azabache | 24h |
| 26 | 1.1.8.2 | Aprobar especificación | 1d? | 2010-05-20 | 2010-05-20 | 25 | 67d |  | start no earlier than 2010-05-13 | Erika Rojas | 8h |

| ID | WBS | Task | Duration | Start | Finish | Predecessors | Total slack | Free slack | Constraint | Resources | Work |
| --- | --- | --- | --- | --- | --- | --- | --- | --- | --- | --- | --- |
| 27 | 1.1.9 | **Caso de Uso: Generar Reporte - Reposición Canje** | 4d? | 2010-05-10 | 2010-05-13 |  | 74d |  |  |  | 32h |
| 28 | 1.1.9.1 | Agregar Reglas del Negocio | 3d | 2010-05-10 | 2010-05-12 |  | 74d | 0d | start no earlier than 2010-05-10 | Edmundo Esteban | 24h |
| 29 | 1.1.9.2 | Aprobar especificación | 1d? | 2010-05-13 | 2010-05-13 | 28 | 74d |  | start no earlier than 2010-05-13 | Erika Rojas | 8h |
| 30 | 1.1.10 | **Caso de Uso: Generar Reporte - Resumen de Canjes** | 4d? | 2010-05-17 | 2010-05-20 |  | 67d |  |  |  | 32h |
| 31 | 1.1.10.1 | Agregar Reglas del Negocio | 3d | 2010-05-17 | 2010-05-19 |  | 67d | 0d | start no earlier than 2010-05-17 | Edmundo Esteban | 24h |
| 32 | 1.1.10.2 | Aprobar especificación | 1d? | 2010-05-20 | 2010-05-20 | 31 | 67d |  | start no earlier than 2010-05-13 | Erika Rojas | 8h |
| 33 | 1.2 | **Arquitectura de Software** | 1d? | 2010-05-16 | 2010-05-16 |  | 71d |  |  |  | 120h |
| 34 | 1.2.1 | Definir metas y restricciones | 1d | 2010-05-16 | 2010-05-16 |  | 71d |  | start no earlier than 2010-05-16 | Erika Rojas; Hebert Borjas; Gonzalo Azabache; Franco Castro; Edmundo Esteban | 40h |
| 35 | 1.2.2 | Elaborar vistas de casos de uso y de datos | 1d? | 2010-05-16 | 2010-05-16 |  | 71d |  | start no earlier than 2010-05-16 | Erika Rojas; Hebert Borjas; Gonzalo Azabache; Franco Castro; Edmundo Esteban | 40h |
| 36 | 1.2.3 | Establecer mecanismos | 1d? | 2010-05-16 | 2010-05-16 |  | 71d |  | start no earlier than 2010-05-16 | Erika Rojas; Hebert Borjas; Gonzalo Azabache; Franco Castro; Edmundo Esteban | 40h |
| 37 | 1.3 | **Administración del Proyecto** | 2d | 2010-05-10 | 2010-05-11 |  | 76d |  |  |  | 16h |
| 38 | 1.3.1 | Elaborar cronograma de ejecución WBS con avances de tareas | 2d | 2010-05-10 | 2010-05-11 |  | 76d |  | start no earlier than 2010-05-10 | Franco Castro | 16h |
| 39 | 1.4 | **Pruebas de Concepto de la Arquitectura** | 7d? | 2010-05-17 | 2010-05-23 |  | 64d |  |  |  | 48h |
| 40 | 1.4.1 | Desarrollo completo de un caso de uso complejo | 3d | 2010-05-17 | 2010-05-19 |  | 67d | 0d | start no earlier than 2010-05-17 | Gonzalo Azabache | 24h |
| 41 | 1.4.2 | Validación del desarrollo del caso de uso complejo | 1d? | 2010-05-20 | 2010-05-20 | 40 | 67d |  |  | Edmundo Esteban | 8h |
| 42 | 1.4.3 | Programación de un caso de uso de reportes | 1d? | 2010-05-22 | 2010-05-22 |  | 64d | 0d | start no earlier than 2010-05-22 | Gonzalo Azabache | 8h |
| 43 | 1.4.4 | Validación del desarrollo del caso de uso de reportes | 1d? | 2010-05-23 | 2010-05-23 | 42 | 64d |  | start no earlier than 2010-05-23 | Edmundo Esteban | 8h |
| 44 | 1.5 | **Gestión del Proyecto** | 79d | 2010-05-08 | 2010-08-05 |  | 0d |  |  |  | 584h |
| 45 | 1.5.1 | **Reunión de seguimiento y desglose de trabajo** | 75d | 2010-05-08 | 2010-08-01 |  | 4d |  |  |  | 480h |
| 46 | 1.5.1.1 | Reunión de seguimiento y desglose de trabajo 1 | 1d | 2010-05-08 | 2010-05-08 |  | 78d |  | start no earlier than 2010-05-08 | Erika Rojas; Hebert Borjas; Gonzalo Azabache; Franco Castro; Edmundo Esteban | 40h |
| 47 | 1.5.1.2 | Reunión de seguimiento y desglose de trabajo 2 | 1d | 2010-05-16 | 2010-05-16 |  | 71d |  | start no earlier than 2010-05-16 | Erika Rojas; Hebert Borjas; Gonzalo Azabache; Franco Castro; Edmundo Esteban | 40h |
| 48 | 1.5.1.3 | Reunión de seguimiento y desglose de trabajo 3 | 1d | 2010-05-23 | 2010-05-23 |  | 64d |  | start no earlier than 2010-05-23 | Erika Rojas; Hebert Borjas; Gonzalo Azabache; Franco Castro; Edmundo Esteban | 40h |
| 49 | 1.5.1.4 | Reunión de seguimiento y desglose de trabajo 4 | 1d | 2010-05-30 | 2010-05-30 |  | 58d |  | start no earlier than 2010-05-30 | Erika Rojas; Hebert Borjas; Gonzalo Azabache; Franco Castro; Edmundo Esteban | 40h |
| 50 | 1.5.1.5 | Reunión de seguimiento y desglose de trabajo 5 | 1d | 2010-06-06 | 2010-06-06 |  | 52d |  | start no earlier than 2010-06-06 | Erika Rojas; Hebert Borjas; Gonzalo Azabache; Franco Castro; Edmundo Esteban | 40h |
| 51 | 1.5.1.6 | Reunión de seguimiento y desglose de trabajo 6 | 1d | 2010-06-13 | 2010-06-13 |  | 46d |  | start no earlier than 2010-06-13 | Erika Rojas; Hebert Borjas; Gonzalo Azabache; Franco Castro; Edmundo Esteban | 40h |
| 52 | 1.5.1.7 | Reunión de seguimiento y desglose de trabajo 7 | 1d | 2010-06-19 | 2010-06-19 |  | 40d |  | start no earlier than 2010-06-19 | Erika Rojas; Hebert Borjas; Gonzalo Azabache; Franco Castro; Edmundo Esteban | 40h |
| 53 | 1.5.1.8 | Reunión de seguimiento y desglose de trabajo 8 | 1d | 2010-06-27 | 2010-06-27 |  | 34d |  | start no earlier than 2010-06-27 | Erika Rojas; Hebert Borjas; Gonzalo Azabache; Franco Castro; Edmundo Esteban | 40h |
| 54 | 1.5.1.9 | Reunión de seguimiento y desglose de trabajo 9 | 1d | 2010-07-04 | 2010-07-04 |  | 28d |  | start no earlier than 2010-07-04 | Erika Rojas; Hebert Borjas; Gonzalo Azabache; Franco Castro; Edmundo Esteban | 40h |
| 55 | 1.5.1.10 | Reunión de seguimiento y desglose de trabajo 10 | 1d | 2010-07-11 | 2010-07-11 |  | 22d |  | start no earlier than 2010-07-11 | Erika Rojas; Hebert Borjas; Gonzalo Azabache; Franco Castro; Edmundo Esteban | 40h |
| 56 | 1.5.1.11 | Reunión de seguimiento y desglose de trabajo 11 | 1d | 2010-07-18 | 2010-07-18 |  | 16d |  | start no earlier than 2010-07-18 | Erika Rojas; Hebert Borjas; Gonzalo Azabache; Franco Castro; Edmundo Esteban | 40h |
| 57 | 1.5.1.12 | Reunión de seguimiento y desglose de trabajo 12 | 1d | 2010-07-25 | 2010-07-25 |  | 10d |  | start no earlier than 2010-07-25 | Erika Rojas; Hebert Borjas; Gonzalo Azabache; Franco Castro; Edmundo Esteban | 40h |
| 58 | 1.5.1.13 | Reunión de seguimiento y desglose de trabajo 13 | 1d | 2010-08-01 | 2010-08-01 |  | 4d |  | start no earlier than 2010-08-01 |  |  |

| ID | WBS | Task | Duration | Start | Finish | Total slack | Constraint | Resources | Work |
| --- | --- | --- | --- | --- | --- | --- | --- | --- | --- |
| 59 | 1.5.2 | **Entrega de Informe de Avances** | 75d | 2010-05-13 | 2010-08-05 | 0d |  |  | 104h |
| 60 | 1.5.2.1 | Entrega de Informe de Avances 1 | 1d | 2010-05-13 | 2010-05-13 | 74d | start no earlier than 2010-05-13 | Erika Rojas | 8h |
| 61 | 1.5.2.2 | Entrega de Informe de Avances 2 | 1d | 2010-05-20 | 2010-05-20 | 67d | start no earlier than 2010-05-20 | Erika Rojas | 8h |
| 62 | 1.5.2.3 | Entrega de Informe de Avances 3 | 1d | 2010-05-27 | 2010-05-27 | 60d | start no earlier than 2010-05-27 | Erika Rojas | 8h |
| 63 | 1.5.2.4 | Entrega de Informe de Avances 4 | 1d | 2010-06-03 | 2010-06-03 | 54d | start no earlier than 2010-06-03 | Erika Rojas | 8h |
| 64 | 1.5.2.5 | Entrega de Informe de Avances 5 | 1d | 2010-06-10 | 2010-06-10 | 48d | start no earlier than 2010-06-10 | Erika Rojas | 8h |
| 65 | 1.5.2.6 | Entrega de Informe de Avances 6 | 1d | 2010-06-17 | 2010-06-17 | 42d | start no earlier than 2010-06-17 | Erika Rojas | 8h |
| 66 | 1.5.2.7 | Entrega de Informe de Avances 7 | 1d | 2010-06-24 | 2010-06-24 | 36d | start no earlier than 2010-06-24 | Erika Rojas | 8h |
| 67 | 1.5.2.8 | Entrega de Informe de Avances 8 | 1d | 2010-07-01 | 2010-07-01 | 30d | start no earlier than 2010-07-01 | Erika Rojas | 8h |
| 68 | 1.5.2.9 | Entrega de Informe de Avances 9 | 1d | 2010-07-08 | 2010-07-08 | 24d | start no earlier than 2010-07-08 | Erika Rojas | 8h |
| 69 | 1.5.2.10 | Entrega de Informe de Avances 10 | 1d | 2010-07-15 | 2010-07-15 | 18d | start no earlier than 2010-07-15 | Erika Rojas | 8h |
| 70 | 1.5.2.11 | Entrega de Informe de Avances 11 | 1d | 2010-07-22 | 2010-07-22 | 12d | start no earlier than 2010-07-22 | Erika Rojas | 8h |
| 71 | 1.5.2.12 | Entrega de Informe de Avances 12 | 1d | 2010-07-29 | 2010-07-29 | 6d | start no earlier than 2010-07-29 | Erika Rojas | 8h |
| 72 | 1.5.2.13 | Entrega de Informe de Avances 13 | 1d | 2010-08-05 | 2010-08-05 | 0d | start no earlier than 2010-08-05 | Erika Rojas | 8h |
