# EDT-SIGFoner

Schedule from MS Project, 2010-05-08 to 2010-05-27, A marks actual dates.

## Calendars

- Estándar: Mon-Fri 09:00-13:00, 15:00-19:00; Sat-Sun off. Exceptions (off unless hours are given): 2010-05-08 09:00-13:00, 15:00-19:00, 2010-05-15 to 2010-05-16 09:00-13:00, 15:00-19:00, 2010-05-22 to 2010-05-23 09:00-13:00, 15:00-19:00.

## Resources

| Resource | Rate |
| --- | --- |
| Gerente de Proyecto | 72.73 |
| Analista de Sistemas | 45.45 |
| Analista Funcional | 40.91 |
| Arquitecto | 40.91 |
| Analista Programador | 36.36 |
| Integrador de Sistemas | 36.36 |
| Diseñador BD Espacial | 36.36 |
| Documentador | 27.27 |
| Programador Jr | 27.27 |
| Asegurador de Calidad | 45.45 |
| Gerente General de Empresa |  |
| Jefe de Proyecto |  |
| Franco Castro |  |
| Erika Rojas |  |
| Gonzalo Azabache |  |
| Edmundo Esteban |  |
| Hebert Borjas |  |
| Erika |  |

## Schedule

| ID | WBS | Task | Type | Duration | Start | Finish | Predecessors | Complete | Remaining | Total slack | Constraint | Resources | Work | Actual work |
| --- | --- | --- | --- | --- | --- | --- | --- | --- | --- | --- | --- | --- | --- | --- |
| 1 | 1 | **Sistema de Fidelización** |  | 19d? | 2010-05-08 A | 2010-05-27 |  | 66% | 6.39d? | 0d |  |  | 634h | 380h |
| 2 | 1.1 | **Requerimientos** |  | 9.75d | 2010-05-10 A | 2010-05-19 A |  | 100% |  |  |  |  | 206h | 206h |
| 3 | 1.1.1 | **Caso de Uso: Mantener Cliente** |  | 9d | 2010-05-10 A | 2010-05-19 A |  | 100% |  |  |  |  | 28h | 28h |
| 4 | 1.1.1.1 | Agregar Reglas del Negocio |  | 3d | 2010-05-10 A | 2010-05-12 A |  | 100% |  |  | start no earlier than 2010-05-10 | Hebert Borjas | 24h | 24h |
| 5 | 1.1.1.2 | Control de ECUS Mantener Cliente |  | 0.5d | 2010-05-17 A | 2010-05-17 A | 4 | 100% |  |  | start no earlier than 2010-05-17 | Gonzalo Azabache | 4h | 4h |
| 6 | 1.1.1.3 | Aprobar especificación | milestone | 0d | 2010-05-19 A | 2010-05-19 A | 5 | 100% |  |  | start no earlier than 2010-05-19 | Erika Rojas |  |  |
| 7 | 1.1.2 | **Caso de Uso: Administrar Cuenta** |  | 2.75d | 2010-05-17 A | 2010-05-19 A |  | 100% |  |  |  |  | 18h | 18h |
| 8 | 1.1.2.1 | Agregar Reglas del Negocio |  | 1.75d | 2010-05-17 A | 2010-05-18 A |  | 100% |  |  | finish no earlier than 2010-05-18 | Hebert Borjas | 14h | 14h |
| 9 | 1.1.2.2 | Control de ECUS Administrar Cuenta |  | 0.5d | 2010-05-18 A | 2010-05-19 A | 8 | 100% |  |  | finish no earlier than 2010-05-18 | Gonzalo Azabache | 4h | 4h |
| 10 | 1.1.2.3 | Aprobar especificación | milestone | 0d | 2010-05-19 A | 2010-05-19 A | 9 | 100% |  |  | finish no earlier than 2010-05-19 | Erika Rojas |  |  |
| 11 | 1.1.3 | **Caso de Uso: Mantener Producto** |  | 2.75d | 2010-05-17 A | 2010-05-19 A |  | 100% |  |  |  |  | 18h | 18h |
| 12 | 1.1.3.1 | Agregar Reglas del Negocio |  | 1.75d | 2010-05-17 A | 2010-05-18 A |  | 100% |  |  | finish no earlier than 2010-05-18 | Erika Rojas | 14h | 14h |
| 13 | 1.1.3.2 | Control de ECUS Mantener Producto |  | 0.5d | 2010-05-18 A | 2010-05-19 A | 12 | 100% |  |  |  | Hebert Borjas | 4h | 4h |
| 14 | 1.1.3.3 | Aprobar especificación | milestone | 0d | 2010-05-19 A | 2010-05-19 A | 13 | 100% |  |  | finish no earlier than 2010-05-19 | Gonzalo Azabache |  |  |
| 15 | 1.1.4 | **Caso de Uso: Registrar Canje** |  | 3.25d | 2010-05-10 A | 2010-05-13 A |  | 100% |  |  |  |  | 26h | 26h |
| 16 | 1.1.4.1 | Agregar Reglas del Negocio |  | 2.75d | 2010-05-10 A | 2010-05-12 A |  | 100% |  |  | start no earlier than 2010-05-10 | Erika Rojas | 22h | 22h |
| 17 | 1.1.4.2 | Control de ECUS Registrar Canje |  | 0.5d | 2010-05-12 A | 2010-05-13 A | 16 | 100% |  |  | finish no earlier than 2010-05-12 | Hebert Borjas | 4h | 4h |
| 18 | 1.1.4.3 | Aprobar especificación | milestone | 0d | 2010-05-13 A | 2010-05-13 A | 17 | 100% |  |  | start no earlier than 2010-05-13 | Gonzalo Azabache |  |  |
| 19 | 1.1.5 | **Caso de Uso: Asignar Puntos x Producto** |  | 1.5d | 2010-05-12 A | 2010-05-13 A |  | 100% |  |  |  |  | 12h | 12h |
| 20 | 1.1.5.1 | Agregar Reglas del Negocio |  | 1d | 2010-05-12 A | 2010-05-12 A |  | 100% |  |  | start no earlier than 2010-05-17 | Franco Castro | 8h | 8h |
| 21 | 1.1.5.2 | Control de ECUS Asignar Puntos x Producto |  | 0.5d | 2010-05-12 A | 2010-05-13 A | 20 | 100% |  |  | start no earlier than 2010-05-12 | Hebert Borjas | 4h | 4h |
| 22 | 1.1.5.3 | Aprobar especificación | milestone | 0d | 2010-05-13 A | 2010-05-13 A | 21 | 100% |  |  | finish no earlier than 2010-05-19 | Gonzalo Azabache |  |  |
| 23 | 1.1.6 | **Caso de Uso: Consultar Puntos x Producto** |  | 2d | 2010-05-17 A | 2010-05-19 A |  | 100% |  |  |  |  | 12h | 12h |
| 24 | 1.1.6.1 | Agregar Reglas del Negocio |  | 1d | 2010-05-17 A | 2010-05-17 A |  | 100% |  |  | start no earlier than 2010-05-10 | Franco Castro | 8h | 8h |
| 25 | 1.1.6.2 | Control de ECUS Consultar Puntos x Producto |  | 0.5d | 2010-05-18 A | 2010-05-18 A | 24 | 100% |  |  |  | Hebert Borjas | 4h | 4h |
| 26 | 1.1.6.3 | Aprobar especificación | milestone | 0d | 2010-05-19 A | 2010-05-19 A | 25 | 100% |  |  | start no earlier than 2010-05-13 | Erika Rojas |  |  |

| ID | WBS | Task | Type | Duration | Start | Finish | Predecessors | Complete | Total slack | Constraint | Resources | Work | Actual work |
| --- | --- | --- | --- | --- | --- | --- | --- | --- | --- | --- | --- | --- | --- |
| 27 | 1.1.7 | **Caso de Uso: Generar Orden de Pedido** |  | 3.5d | 2010-05-10 A | 2010-05-13 A |  | 100% |  |  |  | 28h | 28h |
| 28 | 1.1.7.1 | Agregar Reglas del Negocio |  | 3d | 2010-05-10 A | 2010-05-12 A |  | 100% |  | start no earlier than 2010-05-10 | Gonzalo Azabache | 24h | 24h |
| 29 | 1.1.7.2 | Control de ECUS Generar Orden de Pedido |  | 0.5d | 2010-05-12 A | 2010-05-13 A | 28 | 100% |  |  | Hebert Borjas | 4h | 4h |
| 30 | 1.1.7.3 | Aprobar especificación | milestone | 0d | 2010-05-13 A | 2010-05-13 A | 29 | 100% |  | start no earlier than 2010-05-13 | Erika Rojas |  |  |
| 31 | 1.1.8 | **Caso de Uso: Actualizar Stock de Productos** |  | 2.25d | 2010-05-17 A | 2010-05-19 A |  | 100% |  |  |  | 18h | 18h |
| 32 | 1.1.8.1 | Agregar Reglas del Negocio |  | 1.75d | 2010-05-17 A | 2010-05-18 A |  | 100% |  | finish no earlier than 2010-05-18 | Gonzalo Azabache | 14h | 14h |
| 33 | 1.1.8.2 | Control de ECUS Actualizar Stock de Productos |  | 0.5d | 2010-05-18 A | 2010-05-19 A | 32 | 100% |  |  | Hebert Borjas | 4h | 4h |
| 34 | 1.1.8.3 | Aprobar especificación | milestone | 0d | 2010-05-19 A | 2010-05-19 A | 33 | 100% |  | finish no earlier than 2010-05-19 | Erika Rojas |  |  |
| 35 | 1.1.9 | **Caso de Uso: Generar Reporte de Clientes Fidelizados** |  | 3.5d | 2010-05-10 A | 2010-05-13 A |  | 100% |  |  |  | 28h | 28h |
| 36 | 1.1.9.1 | Agregar Reglas del Negocio |  | 3d | 2010-05-10 A | 2010-05-12 A |  | 100% |  | start no earlier than 2010-05-10 | Edmundo Esteban | 24h | 24h |
| 37 | 1.1.9.2 | Control de ECUS Generar Reporte de Clientes Fidelizados |  | 0.5d | 2010-05-13 A | 2010-05-13 A | 36 | 100% |  |  | Hebert Borjas | 4h | 4h |
| 38 | 1.1.9.3 | Aprobar especificación | milestone | 0d | 2010-05-13 A | 2010-05-13 A | 37 | 100% |  | start no earlier than 2010-05-13 | Erika Rojas |  |  |
| 39 | 1.1.10 | **Caso de Uso: Generar Reporte Reposición de Canje** |  | 2.25d | 2010-05-17 A | 2010-05-19 A |  | 100% |  |  |  | 18h | 18h |
| 40 | 1.1.10.1 | Agregar Reglas del Negocio |  | 1.75d | 2010-05-17 A | 2010-05-18 A |  | 100% |  | finish no earlier than 2010-05-18 | Edmundo Esteban | 14h | 14h |
| 41 | 1.1.10.2 | Control de ECUS Generar Reporte Reposición de Canje |  | 0.5d | 2010-05-18 A | 2010-05-19 A | 40 | 100% |  |  | Hebert Borjas | 4h | 4h |
| 42 | 1.1.10.3 | Aprobar especificación | milestone | 0d | 2010-05-19 A | 2010-05-19 A | 41 | 100% |  | finish no earlier than 2010-05-19 | Erika Rojas |  |  |
| 43 | 1.2 | **Arquitectura de Software** |  | 4.75d? | 2010-05-18 | 2010-05-22 |  |  | 5.25d |  |  | 182h |  |
| 44 | 1.2.1 | **Definir metas y restricciones** |  | 1d | 2010-05-20 | 2010-05-20 |  |  | 7d |  |  | 40h |  |
| 45 | 1.2.1.1 | Listado de requerimientos no funcionales |  | 1d | 2010-05-20 | 2010-05-20 |  |  | 7d | start no earlier than 2010-05-20 | Erika Rojas; Hebert Borjas; Gonzalo Azabache; Franco Castro; Edmundo Esteban | 40h |  |
| 46 | 1.2.2 | **Elaborar vistas de casos de uso** |  | 4.75d? | 2010-05-18 | 2010-05-22 |  |  | 5.25d |  |  | 28h |  |
| 47 | 1.2.2.1 | Actualización del diagrama de actores |  | 1.75d? | 2010-05-18 | 2010-05-19 |  |  | 8.25d | start no earlier than 2010-05-18 | Erika Rojas | 14h |  |
| 48 | 1.2.2.2 | Actualización del diagrama de casos de uso |  | 1.75d? | 2010-05-21 | 2010-05-22 |  |  | 5.25d | start no earlier than 2010-05-21 | Erika Rojas | 14h |  |
| 49 | 1.2.3 | **Elaborar vistas de datos** |  | 2d? | 2010-05-19 | 2010-05-20 |  |  | 7d |  |  | 44h |  |
| 50 | 1.2.3.1 | Actualizar modelo conceptual |  | 1.75d? | 2010-05-19 | 2010-05-20 |  |  | 7.25d | start no earlier than 2010-05-19 | Erika Rojas; Franco Castro | 28h |  |
| 51 | 1.2.3.2 | Generar modelo físico |  | 1d? | 2010-05-20 | 2010-05-20 |  |  | 7d | start no earlier than 2010-05-20 | Erika Rojas; Franco Castro | 16h |  |

| ID | WBS | Task | Type | Duration | Start | Finish | Predecessors | Complete | Remaining | Total slack | Free slack | Constraint | Resources | Work | Actual work |
| --- | --- | --- | --- | --- | --- | --- | --- | --- | --- | --- | --- | --- | --- | --- | --- |
| 52 | 1.2.4 | **Mecanismos** |  | 1.75d? | 2010-05-18 | 2010-05-19 |  |  |  | 8.25d |  |  |  | 70h |  |
| 53 | 1.2.4.1 | Realizar inventario de mecanismos |  | 1.75d? | 2010-05-18 | 2010-05-19 |  |  |  | 8.25d |  | finish no earlier than 2010-05-19 | Erika Rojas; Hebert Borjas; Gonzalo Azabache; Franco Castro; Edmundo Esteban | 70h |  |
| 54 | 1.3 | **Administración del Proyecto** |  | 13d? | 2010-05-10 A | 2010-05-22 |  | 41% | 7.73d? | 5d |  |  |  | 74h | 30h |
| 55 | 1.3.1 | **Planificación** |  | 13d? | 2010-05-10 A | 2010-05-22 |  | 67% | 4.33d? | 5d |  |  |  | 24h | 16h |
| 56 | 1.3.1.1 | Elaborar cronograma de ejecución WBS con avances de tareas |  | 2d | 2010-05-10 A | 2010-05-11 A |  | 100% |  |  |  | start no earlier than 2010-05-10 |  | 16h | 16h |
| 57 | 1.3.1.2 | Actualizar COCOMO |  | 1d? | 2010-05-22 | 2010-05-22 |  |  |  | 5d |  | start no earlier than 2010-05-22 | Gonzalo Azabache | 8h |  |
| 58 | 1.3.2 | **Gestión de Calidad** |  | 4.75d? | 2010-05-18 A | 2010-05-22 |  | 28% | 3.42d? | 5.25d |  |  |  | 50h | 14h |
| 59 | 1.3.2.1 | Lista de comprobación |  | 1d? | 2010-05-18 | 2010-05-18 |  |  |  | 9d |  | start no earlier than 2010-05-18 | Hebert Borjas | 8h |  |
| 60 | 1.3.2.2 | Documento estándar de código |  | 1.75d? | 2010-05-18 A | 2010-05-19 A |  | 100% |  |  |  | finish no earlier than 2010-05-19 | Gonzalo Azabache | 14h | 14h |
| 61 | 1.3.2.3 | Documento estándar de interfaz |  | 1.75d? | 2010-05-19 | 2010-05-20 |  |  |  | 7.25d |  | finish no earlier than 2010-05-20 | Franco Castro | 14h |  |
| 62 | 1.3.2.4 | Documento estándar de nomenclatura |  | 1.75d? | 2010-05-21 | 2010-05-22 |  |  |  | 5.25d |  | finish no earlier than 2010-05-22 | Gonzalo Azabache | 14h |  |
| 63 | 1.4 | **Pruebas de Concepto de la Arquitectura** |  | 1.75d? | 2010-05-22 | 2010-05-23 |  |  |  | 4.25d |  |  |  | 28h |  |
| 64 | 1.4.1 | Programación de un CUS transaccional |  | 1.75d | 2010-05-22 | 2010-05-23 |  |  |  | 4.25d | 0d | finish no earlier than 2010-05-23 |  | 14h |  |
| 65 | 1.4.2 | Validación del desarrollo del CUS transaccional | milestone | 0d? | 2010-05-23 | 2010-05-23 | 64 |  |  | 4.25d |  | finish no earlier than 2010-05-23 |  |  |  |
| 66 | 1.4.3 | Programación de un CUS reporte |  | 1.75d? | 2010-05-22 | 2010-05-23 |  |  |  | 4.25d | 0d | finish no earlier than 2010-05-23 | Gonzalo Azabache | 14h |  |
| 67 | 1.4.4 | Validación del desarrollo del CUS reporte | milestone | 0d? | 2010-05-23 | 2010-05-23 | 66 |  |  | 4.25d |  | finish no earlier than 2010-05-23 | Edmundo Esteban |  |  |
| 68 | 1.5 | **Gestión del Proyecto** |  | 19d | 2010-05-08 A | 2010-05-27 A |  | 100% |  |  |  |  |  | 144h | 144h |
| 69 | 1.5.1 | **Reunión de seguimiento y desglose de trabajo** |  | 15d | 2010-05-08 A | 2010-05-23 A |  | 100% |  |  |  |  |  | 120h | 120h |
| 70 | 1.5.1.1 | Reunión de seguimiento y desglose de trabajo 1 |  | 1d | 2010-05-08 A | 2010-05-08 A |  | 100% |  |  |  | start no earlier than 2010-05-08 | Erika Rojas; Hebert Borjas; Gonzalo Azabache; Franco Castro; Edmundo Esteban | 40h | 40h |
| 71 | 1.5.1.2 | Reunión de seguimiento y desglose de trabajo 2 |  | 1d | 2010-05-16 A | 2010-05-16 A |  | 100% |  |  |  | start no earlier than 2010-05-16 | Erika Rojas; Hebert Borjas; Gonzalo Azabache; Franco Castro; Edmundo Esteban | 40h | 40h |
| 72 | 1.5.1.3 | Reunión de seguimiento y desglose de trabajo 3 |  | 1d | 2010-05-23 A | 2010-05-23 A |  | 100% |  |  |  | start no earlier than 2010-05-23 | Erika Rojas; Hebert Borjas; Gonzalo Azabache; Franco Castro; Edmundo Esteban | 40h | 40h |
| 73 | 1.5.2 | **Entrega de Informe de Avances** |  | 15d | 2010-05-13 A | 2010-05-27 A |  | 100% |  |  |  |  |  | 24h | 24h |
| 74 | 1.5.2.1 | Entrega de Informe de Avances 1 |  | 1d | 2010-05-13 A | 2010-05-13 A |  | 100% |  |  |  | start no earlier than 2010-05-13 | Erika Rojas | 8h | 8h |
| 75 | 1.5.2.2 | Entrega de Informe de Avances 2 |  | 1d | 2010-05-20 A | 2010-05-20 A |  | 100% |  |  |  | start no earlier than 2010-05-20 | Erika Rojas | 8h | 8h |
| 76 | 1.5.2.3 | Entrega de Informe de Avances 3 |  | 1d | 2010-05-27 A | 2010-05-27 A |  | 100% |  |  |  | start no earlier than 2010-05-27 | Erika Rojas | 8h | 8h |
