# EDT-SIGFoner

Schedule from MS Project, 2010-05-08 to 2010-08-05, A marks actual dates.

## Calendars

- Estándar: Mon-Fri 09:00-13:00, 15:00-19:00; Sat-Sun off. Exceptions (off unless hours are given): 2010-05-08 09:00-13:00, 15:00-19:00, 2010-05-15 to 2010-05-16 09:00-13:00, 15:00-19:00, 2010-05-22 to 2010-05-23 09:00-13:00, 15:00-19:00, 2010-05-30 09:00-13:00, 15:00-19:00, 2010-06-05 to 2010-06-06 09:00-13:00, 15:00-19:00, 2010-06-12 to 2010-06-13 09:00-13:00, 15:00-19:00, 2010-06-19 09:00-13:00, 15:00-19:00, 2010-06-27 09:00-13:00, 15:00-19:00, 2010-07-04 09:00-13:00, 15:00-19:00, 2010-07-11 09:00-13:00, 15:00-19:00, 2010-07-18 09:00-13:00, 15:00-19:00, 2010-07-25 09:00-13:00, 15:00-19:00, 2010-08-01 09:00-13:00, 15:00-19:00.

## Resources

| Resource | Rate |
| --- | --- |
| Gerente de Proyecto | 72.73 |
| Analista de Sistemas | 45.45 |
| Analista Funcional | 40.91 |
| Arquitecto | 40.91 |
| Analista Programador | 36.36 |
| Integrador de Sistemas | 36.36 |
| Diseñador BD Espacial | 36.36 |
| Documentador | 27.27 |
| Programador Jr | 27.27 |
| Asegurador de Calidad | 45.45 |
| Gerente General de Empresa |  |
| Jefe de Proyecto |  |
| Franco Castro |  |
| Erika Rojas |  |
| Gonzalo Azabache |  |
| Edmundo Esteban |  |
| Hebert Borjas |  |
| Erika |  |

## Schedule

| ID | WBS | Task | Type | Duration | Start | Finish | Predecessors | Complete | Remaining | Total slack | Constraint | Resources | Work | Actual work |
| --- | --- | --- | --- | --- | --- | --- | --- | --- | --- | --- | --- | --- | --- | --- |
| 1 | 1 | **Sistema de Fidelización** |  | 81d? | 2010-05-08 A | 2010-08-05 |  | 40% | 48.86d? | 0d |  |  | 1746h | 738h |
| 2 | 1.1 | **Requerimientos** |  | 26.75d? | 2010-05-10 A | 2010-06-06 |  | 66% | 9.22d? | 53.25d |  |  | 412h | 270h |
| 3 | 1.1.1 | **Caso de Uso: Mantener Cliente** |  | 26.75d? | 2010-05-10 A | 2010-06-06 |  | 71% | 7.64d? | 53.25d |  |  | 56h | 40h |
| 4 | 1.1.1.1 | Agregar Reglas del Negocio |  | 3d | 2010-05-10 A | 2010-05-12 A |  | 100% |  |  | start no earlier than 2010-05-10 | Hebert Borjas | 24h | 24h |
| 5 | 1.1.1.2 | Control de ECUS Mantener Cliente |  | 1d? | 2010-05-17 A | 2010-05-17 A | 4 | 100% |  |  | start no earlier than 2010-05-17 | Hebert Borjas | 8h | 8h |
| 6 | 1.1.1.3 | Aprobar especificación |  | 1d? | 2010-05-19 A | 2010-05-19 A | 5 | 100% |  |  | start no earlier than 2010-05-19 | Erika Rojas | 8h | 8h |
| 7 | 1.1.1.4 | Descripción de requisitos de información |  | 2d? | 2010-06-03 | 2010-06-05 |  |  |  | 54.25d | finish no earlier than 2010-06-05 | Hebert Borjas | 16h |  |
| 8 | 1.1.1.5 | Registro de información adicional | milestone | 0d? | 2010-06-05 | 2010-06-05 |  |  |  | 54.25d | finish no earlier than 2010-06-05 | Hebert Borjas |  |  |
| 9 | 1.1.1.6 | Control de la descripción de requisitos de información | milestone | 0d? | 2010-06-06 | 2010-06-06 |  |  |  | 53.25d | finish no earlier than 2010-06-06 | Hebert Borjas |  |  |
| 10 | 1.1.2 | **Caso de Uso: Administrar Cuenta** |  | 19.75d? | 2010-05-17 A | 2010-06-06 |  | 61% | 7.68d? | 53.25d |  |  | 36h | 22h |
| 11 | 1.1.2.1 | Agregar Reglas del Negocio |  | 1.75d | 2010-05-17 A | 2010-05-18 A |  | 100% |  |  | finish no earlier than 2010-05-18 | Hebert Borjas | 14h | 14h |
| 12 | 1.1.2.2 | Control de ECUS Administrar Cuenta |  | 1d? | 2010-05-18 A | 2010-05-19 A | 11 | 100% |  |  | finish no earlier than 2010-05-18 | Hebert Borjas | 8h | 8h |
| 13 | 1.1.2.3 | Aprobar especificación | milestone | 0d? | 2010-05-19 A | 2010-05-19 A | 12 | 100% |  |  | finish no earlier than 2010-05-19 | Erika Rojas |  |  |
| 14 | 1.1.2.4 | Descripción de requisitos de información |  | 1.75d? | 2010-06-04 | 2010-06-05 |  |  |  | 54.25d | finish no earlier than 2010-06-05 | Hebert Borjas | 14h |  |
| 15 | 1.1.2.5 | Registro de información adicional | milestone | 0d? | 2010-06-05 | 2010-06-05 |  |  |  | 54.25d | start no earlier than 2010-06-05 | Hebert Borjas |  |  |
| 16 | 1.1.2.6 | Control de la descripción de requisitos de información | milestone | 0d? | 2010-06-06 | 2010-06-06 |  |  |  | 53.25d | finish no earlier than 2010-06-06 | Hebert Borjas |  |  |
| 17 | 1.1.3 | **Caso de Uso: Mantener Producto** |  | 19.75d? | 2010-05-17 A | 2010-06-06 |  | 61% | 7.68d? | 53.25d |  |  | 36h | 22h |
| 18 | 1.1.3.1 | Agregar Reglas del Negocio |  | 1.75d | 2010-05-17 A | 2010-05-18 A |  | 100% |  |  | finish no earlier than 2010-05-18 | Erika Rojas | 14h | 14h |
| 19 | 1.1.3.2 | Control de ECUS Mantener Producto |  | 1d? | 2010-05-18 A | 2010-05-19 A | 18 | 100% |  |  |  | Hebert Borjas | 8h | 8h |
| 20 | 1.1.3.3 | Aprobar especificación | milestone | 0d? | 2010-05-19 A | 2010-05-19 A | 19 | 100% |  |  | finish no earlier than 2010-05-19 | Erika Rojas |  |  |
| 21 | 1.1.3.4 | Descripción de requisitos de información |  | 1.75d? | 2010-06-04 | 2010-06-05 |  |  |  | 54.25d | finish no earlier than 2010-06-05 | Erika Rojas | 14h |  |
| 22 | 1.1.3.5 | Registro de información adicional | milestone | 0d? | 2010-06-05 | 2010-06-05 |  |  |  | 54.25d | start no earlier than 2010-06-05 | Erika Rojas |  |  |
| 23 | 1.1.3.6 | Control de la descripción de requisitos de información | milestone | 0d? | 2010-06-06 | 2010-06-06 |  |  |  | 53.25d | finish no earlier than 2010-06-06 | Hebert Borjas |  |  |
| 24 | 1.1.4 | **Caso de Uso: Registrar Canje** |  | 26.75d? | 2010-05-10 A | 2010-06-06 |  | 67% | 8.92d? | 53.25d |  |  | 42h | 28h |
| 25 | 1.1.4.1 | Agregar Reglas del Negocio |  | 2.75d | 2010-05-10 A | 2010-05-12 A |  | 100% |  |  | start no earlier than 2010-05-10 | Erika Rojas | 22h | 22h |
| 26 | 1.1.4.2 | Control de ECUS Registrar Canje | milestone | 0d | 2010-05-12 A | 2010-05-12 A | 25 | 100% |  |  | finish no earlier than 2010-05-12 | Hebert Borjas |  |  |
| 27 | 1.1.4.3 | Aprobar especificación |  | 0.75d? | 2010-05-13 A | 2010-05-13 A | 26 | 100% |  |  | start no earlier than 2010-05-13 | Gonzalo Azabache | 6h | 6h |
| 28 | 1.1.4.4 | Descripción de requisitos de información |  | 1.75d? | 2010-06-04 | 2010-06-05 |  |  |  | 54.25d | finish no earlier than 2010-06-05 | Erika Rojas | 14h |  |
| 29 | 1.1.4.5 | Registro de información adicional | milestone | 0d? | 2010-06-05 | 2010-06-05 |  |  |  | 54.25d | start no earlier than 2010-06-05 | Erika Rojas |  |  |
| 30 | 1.1.4.6 | Control de la descripción de requisitos de información | milestone | 0d? | 2010-06-06 | 2010-06-06 |  |  |  | 53.25d | finish no earlier than 2010-06-06 | Hebert Borjas |  |  |

| ID | WBS | Task | Type | Duration | Start | Finish | Predecessors | Complete | Remaining | Total slack | Constraint | Resources | Work | Actual work |
| --- | --- | --- | --- | --- | --- | --- | --- | --- | --- | --- | --- | --- | --- | --- |
| 31 | 1.1.5 | **Caso de Uso: Asignar Puntos x Producto** |  | 24.75d? | 2010-05-12 A | 2010-06-06 |  | 50% | 12.38d? | 53.25d |  |  | 28h | 14h |
| 32 | 1.1.5.1 | Agregar Reglas del Negocio |  | 1d | 2010-05-12 A | 2010-05-12 A |  | 100% |  |  | start no earlier than 2010-05-17 | Franco Castro | 8h | 8h |
| 33 | 1.1.5.2 | Control de ECUS Asignar Puntos x Producto | milestone | 0d | 2010-05-12 A | 2010-05-12 A | 32 | 100% |  |  | start no earlier than 2010-05-12 | Hebert Borjas |  |  |
| 34 | 1.1.5.3 | Aprobar especificación |  | 0.75d? | 2010-05-13 A | 2010-05-13 A | 33 | 100% |  |  | finish no earlier than 2010-05-19 | Gonzalo Azabache | 6h | 6h |
| 35 | 1.1.5.4 | Descripción de requisitos de información |  | 1.75d? | 2010-06-04 | 2010-06-05 |  |  |  | 54.25d | finish no earlier than 2010-06-05 | Franco Castro | 14h |  |
| 36 | 1.1.5.5 | Registro de información adicional | milestone | 0d? | 2010-06-05 | 2010-06-05 |  |  |  | 54.25d | start no earlier than 2010-06-05 | Franco Castro |  |  |
| 37 | 1.1.5.6 | Control de la descripción de requisitos de información | milestone | 0d? | 2010-06-06 | 2010-06-06 |  |  |  | 53.25d | finish no earlier than 2010-06-06 | Hebert Borjas |  |  |
| 38 | 1.1.6 | **Caso de Uso: Consultar Puntos x Producto** |  | 19.75d? | 2010-05-17 A | 2010-06-06 |  | 63% | 7.28d? | 53.25d |  |  | 38h | 24h |
| 39 | 1.1.6.1 | Agregar Reglas del Negocio |  | 1d | 2010-05-17 A | 2010-05-17 A |  | 100% |  |  | start no earlier than 2010-05-10 | Franco Castro | 8h | 8h |
| 40 | 1.1.6.2 | Control de ECUS Consultar Puntos x Producto |  | 1d? | 2010-05-18 A | 2010-05-18 A | 39 | 100% |  |  |  | Hebert Borjas | 8h | 8h |
| 41 | 1.1.6.3 | Aprobar especificación |  | 1d? | 2010-05-19 A | 2010-05-19 A | 40 | 100% |  |  | start no earlier than 2010-05-13 | Erika Rojas | 8h | 8h |
| 42 | 1.1.6.4 | Descripción de requisitos de información |  | 1.75d? | 2010-06-04 | 2010-06-05 |  |  |  | 54.25d | finish no earlier than 2010-06-05 | Franco Castro | 14h |  |
| 43 | 1.1.6.5 | Registro de información adicional | milestone | 0d? | 2010-06-05 | 2010-06-05 |  |  |  | 54.25d | start no earlier than 2010-06-05 | Franco Castro |  |  |
| 44 | 1.1.6.6 | Control de la descripción de requisitos de información | milestone | 0d? | 2010-06-06 | 2010-06-06 |  |  |  | 53.25d | finish no earlier than 2010-06-06 | Hebert Borjas |  |  |
| 45 | 1.1.7 | **Caso de Uso: Generar Orden de Pedido** |  | 26.75d? | 2010-05-10 A | 2010-06-06 |  | 70% | 8.14d? | 53.25d |  |  | 46h | 32h |
| 46 | 1.1.7.1 | Agregar Reglas del Negocio |  | 3d | 2010-05-10 A | 2010-05-12 A |  | 100% |  |  | start no earlier than 2010-05-10 | Gonzalo Azabache | 24h | 24h |
| 47 | 1.1.7.2 | Control de ECUS Generar Orden de Pedido | milestone | 0d | 2010-05-12 A | 2010-05-12 A | 46 | 100% |  |  |  | Hebert Borjas |  |  |
| 48 | 1.1.7.3 | Aprobar especificación |  | 1d? | 2010-05-13 A | 2010-05-13 A | 47 | 100% |  |  | start no earlier than 2010-05-13 | Hebert Borjas | 8h | 8h |
| 49 | 1.1.7.4 | Descripción de requisitos de información |  | 1.75d? | 2010-06-04 | 2010-06-05 |  |  |  | 54.25d | finish no earlier than 2010-06-05 | Gonzalo Azabache | 14h |  |
| 50 | 1.1.7.5 | Registro de información adicional | milestone | 0d? | 2010-06-05 | 2010-06-05 |  |  |  | 54.25d | start no earlier than 2010-06-05 | Gonzalo Azabache |  |  |
| 51 | 1.1.7.6 | Control de la descripción de requisitos de información | milestone | 0d? | 2010-06-06 | 2010-06-06 |  |  |  | 53.25d | finish no earlier than 2010-06-06 | Hebert Borjas |  |  |
| 52 | 1.1.8 | **Caso de Uso: Actualizar Stock de Productos** |  | 19.75d? | 2010-05-17 A | 2010-06-06 |  | 59% | 8.13d? | 53.25d |  |  | 34h | 20h |
| 53 | 1.1.8.1 | Agregar Reglas del Negocio |  | 1.75d | 2010-05-17 A | 2010-05-18 A |  | 100% |  |  | finish no earlier than 2010-05-18 | Gonzalo Azabache | 14h | 14h |
| 54 | 1.1.8.2 | Control de ECUS Actualizar Stock de Productos | milestone | 0d | 2010-05-18 A | 2010-05-18 A | 53 | 100% |  |  |  | Hebert Borjas |  |  |
| 55 | 1.1.8.3 | Aprobar especificación |  | 0.75d? | 2010-05-19 A | 2010-05-19 A | 54 | 100% |  |  | finish no earlier than 2010-05-19 | Erika Rojas | 6h | 6h |
| 56 | 1.1.8.4 | Descripción de requisitos de información |  | 1.75d? | 2010-06-04 | 2010-06-05 |  |  |  | 54.25d | finish no earlier than 2010-06-05 | Gonzalo Azabache | 14h |  |
| 57 | 1.1.8.5 | Registro de información adicional | milestone | 0d? | 2010-06-05 | 2010-06-05 |  |  |  | 54.25d | start no earlier than 2010-06-05 | Gonzalo Azabache |  |  |
| 58 | 1.1.8.6 | Control de la descripción de requisitos de información | milestone | 0d? | 2010-06-06 | 2010-06-06 |  |  |  | 53.25d | finish no earlier than 2010-06-06 | Hebert Borjas |  |  |

| ID | WBS | Task | Type | Duration | Start | Finish | Predecessors | Complete | Remaining | Total slack | Constraint | Resources | Work | Actual work |
| --- | --- | --- | --- | --- | --- | --- | --- | --- | --- | --- | --- | --- | --- | --- |
| 59 | 1.1.9 | **Caso de Uso: Generar Reporte de Clientes Fidelizados** |  | 26.75d? | 2010-05-10 A | 2010-06-06 |  | 74% | 6.93d? | 53.25d |  |  | 54h | 40h |
| 60 | 1.1.9.1 | Agregar Reglas del Negocio |  | 3d | 2010-05-10 A | 2010-05-12 A |  | 100% |  |  | start no earlier than 2010-05-10 | Edmundo Esteban | 24h | 24h |
| 61 | 1.1.9.2 | Control de ECUS Generar Reporte de Clientes Fidelizados |  | 1d? | 2010-05-13 A | 2010-05-13 A | 60 | 100% |  |  |  | Hebert Borjas | 8h | 8h |
| 62 | 1.1.9.3 | Aprobar especificación |  | 1d? | 2010-05-13 A | 2010-05-13 A | 61 | 100% |  |  | start no earlier than 2010-05-13 | Erika Rojas | 8h | 8h |
| 63 | 1.1.9.4 | Descripción de requisitos de información |  | 1.75d? | 2010-06-04 | 2010-06-05 |  |  |  | 54.25d | finish no earlier than 2010-06-05 | Edmundo Esteban | 14h |  |
| 64 | 1.1.9.5 | Registro de información adicional | milestone | 0d? | 2010-06-05 | 2010-06-05 |  |  |  | 54.25d | start no earlier than 2010-06-05 | Edmundo Esteban |  |  |
| 65 | 1.1.9.6 | Control de la descripción de requisitos de información | milestone | 0d? | 2010-06-06 | 2010-06-06 |  |  |  | 53.25d | finish no earlier than 2010-06-06 | Hebert Borjas |  |  |
| 66 | 1.1.10 | **Caso de Uso: Generar Reporte Reposición de Canje** |  | 19.75d? | 2010-05-17 A | 2010-06-06 |  | 67% | 6.58d? | 53.25d |  |  | 42h | 28h |
| 67 | 1.1.10.1 | Agregar Reglas del Negocio |  | 1.75d | 2010-05-17 A | 2010-05-18 A |  | 100% |  |  | finish no earlier than 2010-05-18 | Edmundo Esteban | 14h | 14h |
| 68 | 1.1.10.2 | Control de ECUS Generar Reporte Reposición de Canje |  | 1d? | 2010-05-18 A | 2010-05-19 A | 67 | 100% |  |  |  | Hebert Borjas | 8h | 8h |
| 69 | 1.1.10.3 | Aprobar especificación |  | 0.75d? | 2010-05-19 A | 2010-05-19 A | 68 | 100% |  |  | finish no earlier than 2010-05-19 | Erika Rojas | 6h | 6h |
| 70 | 1.1.10.4 | Descripción de requisitos de información |  | 1.75d? | 2010-06-04 | 2010-06-05 |  |  |  | 54.25d | finish no earlier than 2010-06-05 | Edmundo Esteban | 14h |  |
| 71 | 1.1.10.5 | Registro de información adicional | milestone | 0d? | 2010-06-05 | 2010-06-05 |  |  |  | 54.25d | start no earlier than 2010-06-05 | Edmundo Esteban |  |  |
| 72 | 1.1.10.6 | Control de la descripción de requisitos de información | milestone | 0d? | 2010-06-06 | 2010-06-06 |  |  |  | 53.25d | finish no earlier than 2010-06-06 | Hebert Borjas |  |  |
| 73 | 1.2 | **Realización de Casos de Uso** |  | 1d? | 2010-06-07 | 2010-06-07 |  |  |  | 52d |  |  | 80h |  |
| 74 | 1.2.1 | RCUS - Mantener Cliente |  | 1d? | 2010-06-07 | 2010-06-07 |  |  |  | 52d | start no earlier than 2010-06-07 | Hebert Borjas | 8h |  |
| 75 | 1.2.2 | RCUS - Administrar Cuenta |  | 1d? | 2010-06-07 | 2010-06-07 |  |  |  | 52d | start no earlier than 2010-06-07 | Hebert Borjas | 8h |  |
| 76 | 1.2.3 | RCUS - Mantener Producto |  | 1d? | 2010-06-07 | 2010-06-07 |  |  |  | 52d | start no earlier than 2010-06-07 | Erika Rojas | 8h |  |
| 77 | 1.2.4 | RCUS - Registrar Canje |  | 1d? | 2010-06-07 | 2010-06-07 |  |  |  | 52d | start no earlier than 2010-06-07 | Erika Rojas | 8h |  |
| 78 | 1.2.5 | RCUS - Asignar Puntos x Producto |  | 1d? | 2010-06-07 | 2010-06-07 |  |  |  | 52d | start no earlier than 2010-06-07 | Franco Castro | 8h |  |
| 79 | 1.2.6 | RCUS - Consultar Puntos x Producto |  | 1d? | 2010-06-07 | 2010-06-07 |  |  |  | 52d | start no earlier than 2010-06-07 | Franco Castro | 8h |  |
| 80 | 1.2.7 | RCUS - Generar Orden de Pedido |  | 1d? | 2010-06-07 | 2010-06-07 |  |  |  | 52d | start no earlier than 2010-06-07 | Gonzalo Azabache | 8h |  |
| 81 | 1.2.8 | RCUS - Actualizar Stock de Productos |  | 1d? | 2010-06-07 | 2010-06-07 |  |  |  | 52d | start no earlier than 2010-06-07 | Gonzalo Azabache | 8h |  |
| 82 | 1.2.9 | RCUS - Generar Reporte de Clientes Fidelizados |  | 1d? | 2010-06-07 | 2010-06-07 |  |  |  | 52d | start no earlier than 2010-06-07 | Edmundo Esteban | 8h |  |
| 83 | 1.2.10 | RCUS - Generar Reporte Reposición de Canje |  | 1d? | 2010-06-07 | 2010-06-07 |  |  |  | 52d | start no earlier than 2010-06-07 | Edmundo Esteban | 8h |  |

| ID | WBS | Task | Duration | Start | Finish | Complete | Remaining | Total slack | Constraint | Resources | Work | Actual work |
| --- | --- | --- | --- | --- | --- | --- | --- | --- | --- | --- | --- | --- |
| 84 | 1.3 | **Arquitectura de Software** | 24.75d? | 2010-05-18 A | 2010-06-12 | 19% | 20.04d? | 47.25d |  |  | 488h | 182h |
| 85 | 1.3.1 | **Definir metas y restricciones** | 1d? | 2010-05-20 A | 2010-05-20 A | 100% |  |  |  |  | 40h | 40h |
| 86 | 1.3.1.1 | Listado de requerimientos no funcionales | 1d? | 2010-05-20 A | 2010-05-20 A | 100% |  |  | start no earlier than 2010-05-20 | Erika Rojas; Hebert Borjas; Gonzalo Azabache; Franco Castro; Edmundo Esteban | 40h | 40h |
| 87 | 1.3.2 | **Elaborar vistas de casos de uso** | 4.75d? | 2010-05-18 A | 2010-05-22 A | 100% |  |  |  |  | 28h | 28h |
| 88 | 1.3.2.1 | Actualización del diagrama de actores | 1.75d? | 2010-05-18 A | 2010-05-19 A | 100% |  |  | start no earlier than 2010-05-18 | Erika Rojas | 14h | 14h |
| 89 | 1.3.2.2 | Actualización del diagrama de casos de uso | 1.75d? | 2010-05-21 A | 2010-05-22 A | 100% |  |  | start no earlier than 2010-05-21 | Erika Rojas | 14h | 14h |
| 90 | 1.3.3 | **Elaborar vistas de datos** | 23.75d? | 2010-05-19 A | 2010-06-12 | 23% | 18.19d? | 47.25d |  |  | 116h | 44h |
| 91 | 1.3.3.1 | Actualizar modelo conceptual | 1.75d? | 2010-05-19 A | 2010-05-20 A | 100% |  |  | start no earlier than 2010-05-19 | Erika Rojas; Franco Castro | 28h | 28h |
| 92 | 1.3.3.2 | Generar modelo físico | 1d? | 2010-05-20 A | 2010-05-20 A | 100% |  |  | start no earlier than 2010-05-20 | Erika Rojas; Franco Castro | 16h | 16h |
| 93 | 1.3.3.3 | Diccionario de Datos | 9d? | 2010-06-03 | 2010-06-12 |  |  | 47.25d | finish no earlier than 2010-06-12 | Erika Rojas | 72h |  |
| 94 | 1.3.4 | **Mecanismos** | 20d? | 2010-05-18 A | 2010-06-07 | 64% | 7.27d? | 52d |  |  | 78h | 70h |
| 95 | 1.3.4.1 | Realizar inventario de mecanismos | 1.75d? | 2010-05-18 A | 2010-05-19 A | 100% |  |  | finish no earlier than 2010-05-19 | Erika Rojas; Hebert Borjas; Gonzalo Azabache; Franco Castro; Edmundo Esteban | 70h | 70h |
| 96 | 1.3.4.2 | Descripción de la solución de mecanismos | 1d? | 2010-06-07 | 2010-06-07 |  |  | 52d | start no earlier than 2010-06-07 | Edmundo Esteban | 8h |  |
| 97 | 1.3.5 | **Vista General** | 7.75d? | 2010-06-03 | 2010-06-10 |  |  | 49.25d |  |  | 62h |  |
| 98 | 1.3.5.1 | Descripción del patrón de arquitectura | 7.75d? | 2010-06-03 | 2010-06-10 |  |  | 49.25d | finish no earlier than 2010-06-10 | Hebert Borjas | 62h |  |
| 99 | 1.3.6 | **Vista de implementación** | 9.75d? | 2010-06-03 | 2010-06-12 |  |  | 47.25d |  |  | 78h |  |
| 100 | 1.3.6.1 | Diagrama de componentes | 9.75d? | 2010-06-03 | 2010-06-12 |  |  | 47.25d | finish no earlier than 2010-06-12 | Gonzalo Azabache | 78h |  |
| 101 | 1.3.7 | **Vista de despliegue** | 9.75d? | 2010-06-03 | 2010-06-12 |  |  | 47.25d |  |  | 78h |  |
| 102 | 1.3.7.1 | Diagrama de despliegue | 9.75d? | 2010-06-03 | 2010-06-12 |  |  | 47.25d | finish no earlier than 2010-06-12 | Franco Castro | 78h |  |
| 103 | 1.3.8 | **Paquetes de diseño** | 1d? | 2010-06-07 | 2010-06-07 |  |  | 52d |  |  | 8h |  |
| 104 | 1.3.8.1 | Diagrama del paquete de diseño | 1d? | 2010-06-07 | 2010-06-07 |  |  | 52d | start no earlier than 2010-06-07 | Erika Rojas | 8h |  |
| 105 | 1.4 | **Administración del Proyecto** | 13d? | 2010-05-10 A | 2010-05-22 A | 100% |  |  |  |  | 74h | 74h |
| 106 | 1.4.1 | **Planificación** | 13d? | 2010-05-10 A | 2010-05-22 A | 100% |  |  |  |  | 24h | 24h |
| 107 | 1.4.1.1 | Elaborar cronograma de ejecución WBS con avances de tareas | 2d | 2010-05-10 A | 2010-05-11 A | 100% |  |  | start no earlier than 2010-05-10 | Franco Castro | 16h | 16h |
| 108 | 1.4.1.2 | Actualizar COCOMO | 1d? | 2010-05-22 A | 2010-05-22 A | 100% |  |  | start no earlier than 2010-05-22 | Gonzalo Azabache | 8h | 8h |

| ID | WBS | Task | Type | Duration | Start | Finish | Predecessors | Complete | Remaining | Total slack | Constraint | Resources | Work | Actual work |
| --- | --- | --- | --- | --- | --- | --- | --- | --- | --- | --- | --- | --- | --- | --- |
| 109 | 1.4.2 | **Gestión de Calidad** |  | 4.75d? | 2010-05-18 A | 2010-05-22 A |  | 100% |  |  |  |  | 50h | 50h |
| 110 | 1.4.2.1 | Lista de comprobación |  | 1d? | 2010-05-18 A | 2010-05-18 A |  | 100% |  |  | start no earlier than 2010-05-18 | Hebert Borjas | 8h | 8h |
| 111 | 1.4.2.2 | Documento estándar de código |  | 1.75d? | 2010-05-18 A | 2010-05-19 A |  | 100% |  |  | finish no earlier than 2010-05-19 | Gonzalo Azabache | 14h | 14h |
| 112 | 1.4.2.3 | Documento estándar de interfaz |  | 1.75d? | 2010-05-19 A | 2010-05-20 A |  | 100% |  |  | finish no earlier than 2010-05-20 | Franco Castro | 14h | 14h |
| 113 | 1.4.2.4 | Documento estándar de nomenclatura |  | 1.75d? | 2010-05-21 A | 2010-05-22 A |  | 100% |  |  | finish no earlier than 2010-05-22 | Gonzalo Azabache | 14h | 14h |
| 114 | 1.5 | **Pruebas de Concepto de la Arquitectura** |  | 1.75d? | 2010-05-22 A | 2010-05-23 A |  | 100% |  |  |  |  | 28h | 28h |
| 115 | 1.5.1 | Programación de un CUS transaccional |  | 1.75d | 2010-05-22 A | 2010-05-23 A |  | 100% |  |  | finish no earlier than 2010-05-23 | Gonzalo Azabache | 14h | 14h |
| 116 | 1.5.2 | Validación del desarrollo del CUS transaccional | milestone | 0d? | 2010-05-23 A | 2010-05-23 A | 115 | 100% |  |  | finish no earlier than 2010-05-23 | Edmundo Esteban |  |  |
| 117 | 1.5.3 | Programación de un CUS reporte |  | 1.75d? | 2010-05-22 A | 2010-05-23 A |  | 100% |  |  | finish no earlier than 2010-05-23 | Gonzalo Azabache | 14h | 14h |
| 118 | 1.5.4 | Validación del desarrollo del CUS reporte | milestone | 0d? | 2010-05-23 A | 2010-05-23 A | 117 | 100% |  |  | finish no earlier than 2010-05-23 | Edmundo Esteban |  |  |
| 119 | 1.6 | **Sistema** |  | 10d | 2010-06-02 | 2010-06-12 |  |  |  | 47.25d |  |  | 80h |  |
| 120 | 1.6.1 | Programación del escenario principal |  | 10d | 2010-06-02 | 2010-06-12 |  |  |  | 47.25d | finish no earlier than 2010-06-12 | Gonzalo Azabache | 80h |  |
| 121 | 1.7 | **Gestión del Proyecto** |  | 81d | 2010-05-08 A | 2010-08-05 |  | 27% | 59.19d | 0d |  |  | 584h | 184h |
| 122 | 1.7.1 | **Reunión de seguimiento y desglose de trabajo** |  | 77d | 2010-05-08 A | 2010-08-01 |  | 31% | 53.31d | 4d |  |  | 480h | 160h |
| 123 | 1.7.1.1 | Reunión de seguimiento y desglose de trabajo 1 |  | 1d | 2010-05-08 A | 2010-05-08 A |  | 100% |  |  | start no earlier than 2010-05-08 | Erika Rojas; Hebert Borjas; Gonzalo Azabache; Franco Castro; Edmundo Esteban | 40h | 40h |
| 124 | 1.7.1.2 | Reunión de seguimiento y desglose de trabajo 2 |  | 1d | 2010-05-16 A | 2010-05-16 A |  | 100% |  |  | start no earlier than 2010-05-16 | Erika Rojas; Hebert Borjas; Gonzalo Azabache; Franco Castro; Edmundo Esteban | 40h | 40h |
| 125 | 1.7.1.3 | Reunión de seguimiento y desglose de trabajo 3 |  | 1d | 2010-05-23 A | 2010-05-23 A |  | 100% |  |  | start no earlier than 2010-05-23 | Erika Rojas; Hebert Borjas; Gonzalo Azabache; Franco Castro; Edmundo Esteban | 40h | 40h |
| 126 | 1.7.1.4 | Reunión de seguimiento y desglose de trabajo 4 |  | 1d | 2010-05-30 A | 2010-05-30 A |  | 100% |  |  | start no earlier than 2010-05-30 | Erika Rojas; Hebert Borjas; Gonzalo Azabache; Franco Castro; Edmundo Esteban | 40h | 40h |
| 127 | 1.7.1.5 | Reunión de seguimiento y desglose de trabajo 5 |  | 1d | 2010-06-06 | 2010-06-06 |  |  |  | 53d | start no earlier than 2010-06-06 | Erika Rojas; Hebert Borjas; Gonzalo Azabache; Franco Castro; Edmundo Esteban | 40h |  |
| 128 | 1.7.1.6 | Reunión de seguimiento y desglose de trabajo 6 |  | 1d | 2010-06-13 | 2010-06-13 |  |  |  | 46d | start no earlier than 2010-06-13 | Erika Rojas; Hebert Borjas; Gonzalo Azabache; Franco Castro; Edmundo Esteban | 40h |  |
| 129 | 1.7.1.7 | Reunión de seguimiento y desglose de trabajo 7 |  | 1d | 2010-06-19 | 2010-06-19 |  |  |  | 40d | start no earlier than 2010-06-19 | Erika Rojas; Hebert Borjas; Gonzalo Azabache; Franco Castro; Edmundo Esteban | 40h |  |
| 130 | 1.7.1.8 | Reunión de seguimiento y desglose de trabajo 8 |  | 1d | 2010-06-27 | 2010-06-27 |  |  |  | 34d | start no earlier than 2010-06-27 | Erika Rojas; Hebert Borjas; Gonzalo Azabache; Franco Castro; Edmundo Esteban | 40h |  |
| 131 | 1.7.1.9 | Reunión de seguimiento y desglose de trabajo 9 |  | 1d | 2010-07-04 | 2010-07-04 |  |  |  | 28d | start no earlier than 2010-07-04 | Erika Rojas; Hebert Borjas; Gonzalo Azabache; Franco Castro; Edmundo Esteban | 40h |  |
| 132 | 1.7.1.10 | Reunión de seguimiento y desglose de trabajo 10 |  | 1d | 2010-07-11 | 2010-07-11 |  |  |  | 22d | start no earlier than 2010-07-11 | Erika Rojas; Hebert Borjas; Gonzalo Azabache; Franco Castro; Edmundo Esteban | 40h |  |
| 133 | 1.7.1.11 | Reunión de seguimiento y desglose de trabajo 11 |  | 1d | 2010-07-18 | 2010-07-18 |  |  |  | 16d | start no earlier than 2010-07-18 | Erika Rojas; Hebert Borjas; Gonzalo Azabache; Franco Castro; Edmundo Esteban | 40h |  |
| 134 | 1.7.1.12 | Reunión de seguimiento y desglose de trabajo 12 |  | 1d | 2010-07-25 | 2010-07-25 |  |  |  | 10d | start no earlier than 2010-07-25 | Erika Rojas; Hebert Borjas; Gonzalo Azabache; Franco Castro; Edmundo Esteban | 40h |  |
| 135 | 1.7.1.13 | Reunión de seguimiento y desglose de trabajo 13 |  | 1d | 2010-08-01 | 2010-08-01 |  |  |  | 4d | start no earlier than 2010-08-01 |  |  |  |

| ID | WBS | Task | Duration | Start | Finish | Complete | Remaining | Total slack | Constraint | Resources | Work | Actual work |
| --- | --- | --- | --- | --- | --- | --- | --- | --- | --- | --- | --- | --- |
| 136 | 1.7.2 | **Entrega de Informe de Avances** | 77d | 2010-05-13 A | 2010-08-05 | 23% | 59.23d | 0d |  |  | 104h | 24h |
| 137 | 1.7.2.1 | Entrega de Informe de Avances 1 | 1d | 2010-05-13 A | 2010-05-13 A | 100% |  |  | start no earlier than 2010-05-13 | Erika Rojas | 8h | 8h |
| 138 | 1.7.2.2 | Entrega de Informe de Avances 2 | 1d | 2010-05-20 A | 2010-05-20 A | 100% |  |  | start no earlier than 2010-05-20 | Erika Rojas | 8h | 8h |
| 139 | 1.7.2.3 | Entrega de Informe de Avances 3 | 1d | 2010-05-27 A | 2010-05-27 A | 100% |  |  | start no earlier than 2010-05-27 | Erika Rojas | 8h | 8h |
| 140 | 1.7.2.4 | Entrega de Informe de Avances 4 | 1d | 2010-06-03 | 2010-06-03 |  |  | 56d | start no earlier than 2010-06-03 | Erika Rojas | 8h |  |
| 141 | 1.7.2.5 | Entrega de Informe de Avances 5 | 1d | 2010-06-10 | 2010-06-10 |  |  | 49d | start no earlier than 2010-06-10 | Erika Rojas | 8h |  |
| 142 | 1.7.2.6 | Entrega de Informe de Avances 6 | 1d | 2010-06-17 | 2010-06-17 |  |  | 42d | start no earlier than 2010-06-17 | Erika Rojas | 8h |  |
| 143 | 1.7.2.7 | Entrega de Informe de Avances 7 | 1d | 2010-06-24 | 2010-06-24 |  |  | 36d | start no earlier than 2010-06-24 | Erika Rojas | 8h |  |
| 144 | 1.7.2.8 | Entrega de Informe de Avances 8 | 1d | 2010-07-01 | 2010-07-01 |  |  | 30d | start no earlier than 2010-07-01 | Erika Rojas | 8h |  |
| 145 | 1.7.2.9 | Entrega de Informe de Avances 9 | 1d | 2010-07-08 | 2010-07-08 |  |  | 24d | start no earlier than 2010-07-08 | Erika Rojas | 8h |  |
| 146 | 1.7.2.10 | Entrega de Informe de Avances 10 | 1d | 2010-07-15 | 2010-07-15 |  |  | 18d | start no earlier than 2010-07-15 | Erika Rojas | 8h |  |
| 147 | 1.7.2.11 | Entrega de Informe de Avances 11 | 1d | 2010-07-22 | 2010-07-22 |  |  | 12d | start no earlier than 2010-07-22 | Erika Rojas | 8h |  |
| 148 | 1.7.2.12 | Entrega de Informe de Avances 12 | 1d | 2010-07-29 | 2010-07-29 |  |  | 6d | start no earlier than 2010-07-29 | Erika Rojas | 8h |  |
| 149 | 1.7.2.13 | Entrega de Informe de Avances 13 | 1d | 2010-08-05 | 2010-08-05 |  |  | 0d | start no earlier than 2010-08-05 | Erika Rojas | 8h |  |
